# ES296-A2402 - VIETNAM GREASE PLANT

Schedule from MS Project, 2025-05-05 to 2025-06-11, A marks actual dates.

## Calendars

- Standard: Mon-Fri 08:00-12:00, 13:00-17:00; Sat-Sun off.

## Resources

| Resource |
| --- |
| Phạm Xuân Thịnh |
| Ngô Hoài Phúc |
| Trần Hoàng Tú |
| Võ Kinh Đô |
| Nguyễn Lâm Hữu Thiên |
| Nguyễn Song Hào |
| Ngô Thị Vân |

## Schedule

| ID | WBS | Task | Duration | Start | Finish | Predecessors | Complete | Remaining | Total slack | Free slack | Constraint | Resources | Work | Actual work | Hours | Unit |
| --- | --- | --- | --- | --- | --- | --- | --- | --- | --- | --- | --- | --- | --- | --- | --- | --- |
| 1 | 1 | **Pre-Commissioning** | 22d | 2025-05-05 A | 2025-06-03 |  | 80% | 4.46d | 6d |  |  | Phạm Xuân Thịnh; Ngô Hoài Phúc; Trần Hoàng Tú; Võ Kinh Đô | 1104h | 376.4h |  |  |
| 2 | 1.1 | Installing and verifying the electrical connection of equipments inside MCC and PLC Cabinet. | 2d | 2025-05-05 A | 2025-05-06 A |  | 100% |  |  |  | start no earlier than 2025-05-05 | Phạm Xuân Thịnh; Ngô Hoài Phúc; Trần Hoàng Tú; Võ Kinh Đô | 16h | 16h | 16 | Giờ |
| 3 | 1.2 | Power up and verify the connection of installed equipments | 1d | 2025-05-07 A | 2025-05-07 A | 2 | 100% |  |  |  |  | Phạm Xuân Thịnh; Ngô Hoài Phúc; Trần Hoàng Tú; Võ Kinh Đô | 32h | 32h |  | Giờ |
| 4 | 1.3 | Loading PLC program and SCADA system | 1d | 2025-05-07 A | 2025-05-07 A |  | 100% |  |  |  | start no earlier than 2025-05-07 | Phạm Xuân Thịnh; Trần Hoàng Tú; Nguyễn Lâm Hữu Thiên | 16h | 16h |  | Giờ |
| 5 | 1.4 | Loop test instrument devices | 2d | 2025-05-08 A | 2025-05-09 A | 4 | 100% |  |  |  |  | Phạm Xuân Thịnh; Trần Hoàng Tú; Nguyễn Lâm Hữu Thiên | 48h | 48h | 16 | Giờ |
| 6 | 1.5 | Loop test instrument devices, setting value and testing motor | 5d | 2025-05-19 A | 2025-05-23 |  | 93% | 0.35d | 3.7d | 0d | start no earlier than 2025-05-19 | Phạm Xuân Thịnh; Trần Hoàng Tú; Nguyễn Lâm Hữu Thiên | 120h | 111.6h | 40 | Giờ |
| 7 | 1.6 | Internal function test | 5d | 2025-05-26 A | 2025-05-30 | 6 | 74% | 1.3d | 8d |  |  | Phạm Xuân Thịnh; Trần Hoàng Tú; Nguyễn Lâm Hữu Thiên | 120h | 88.8h | 40 | Giờ |
| 8 | 1.7 | Function test with customer | 2d | 2025-06-02 | 2025-06-03 |  |  |  | 6d |  |  | Phạm Xuân Thịnh; Trần Hoàng Tú; Nguyễn Lâm Hữu Thiên | 48h |  | 16 | Giờ |
| 9 | 2 | **Commissioning** | 5d | 2025-06-04 | 2025-06-10 |  |  |  | 1d |  |  | Phạm Xuân Thịnh; Trần Hoàng Tú; Nguyễn Lâm Hữu Thiên | 240h |  |  |  |
| 10 | 2.1 | Interlock sequence test | 1d | 2025-06-04 | 2025-06-04 |  |  |  | 1d | 0d | start no earlier than 2025-06-04 | Phạm Xuân Thịnh; Trần Hoàng Tú; Nguyễn Lâm Hữu Thiên | 24h |  |  | Giờ |
| 11 | 2.2 | Run test the system with water | 2d | 2025-06-05 | 2025-06-06 | 10 |  |  | 1d | 0d |  | Phạm Xuân Thịnh; Trần Hoàng Tú; Nguyễn Lâm Hữu Thiên | 48h |  | 16 | Giờ |
| 12 | 2.3 | Run test the system with real material | 2d | 2025-06-09 | 2025-06-10 | 11 |  |  | 1d |  |  | Phạm Xuân Thịnh; Trần Hoàng Tú; Nguyễn Lâm Hữu Thiên | 48h |  | 16 | Giờ |
| 13 | 3 | **SAT & Handover** | 1d | 2025-06-11 | 2025-06-11 |  |  |  | 0d |  |  | Nguyễn Song Hào; Ngô Thị Vân | 32h |  |  |  |
| 14 | 3.1 | SAT & Handover | 1d | 2025-06-11 | 2025-06-11 |  |  |  | 0d |  | start no earlier than 2025-06-11 | Nguyễn Song Hào; Ngô Thị Vân | 16h |  |  | Giờ |

Notes:
- 1: Pending by JCEM
- 6: Pending by JCEM
- 7: Pending by JCEM
- 8: Pending by JCEM
- 9: Waiting for new update from JCEM
- 13: Waiting for new update from JCEM
